Schedule from OmniPlan, 2017-12-20 to 2018-01-11.
Project start 2017-12-19

## Resources

| Resource | Group |
| --- | --- |
| 资源 1 | staff |
| 设备 1 | equipment |
| 素材 1 | material |
| 群组 1 | group |
| 贾东坡 | staff |
| 黎杰 | staff |
| 孟详龙 | staff |
| 周游 | staff |

## Schedule

| ID | WBS | Task | Start | Complete | Constraint | Resources | Work | Actual work |
| --- | --- | --- | --- | --- | --- | --- | --- | --- |
| 1 | 1 | **设计** |  |  | start no earlier than 2017-12-20 |  |  |  |
| 2 | 1.1 | **数据库设计** |  |  | start no earlier than 2017-12-20 |  |  |  |
| 3 | 1.1.1 | 权限、人员、组 | 2017-12-20 | 100% | finish no later than 2017-12-21 | 贾东坡 | 1h | 1h |
| 4 | 1.1.2 | 工单基础信息表 | 2017-12-20 | 100% | start no earlier than 2017-12-20 | 贾东坡 | 1h | 1h |
| 5 | 1.1.3 | 工单应用信息表 | 2017-12-20 | 100% | start no earlier than 2017-12-21 | 贾东坡 | 1h | 1h |
| 6 | 1.1.4 | 工单流转信息表 | 2017-12-20 | 100% | start no earlier than 2017-12-21 | 贾东坡 | 2h | 2h |
| 7 | 1.1.5 | 工单流转日志表 | 2017-12-20 | 100% | start no earlier than 2017-12-21 | 贾东坡 | 2h | 2h |
| 8 | 1.1.6 | 关闭工单评价表 | 2017-12-20 | 100% | start no earlier than 2017-12-21 | 贾东坡 | 1h | 1h |
| 9 | 1.2 | **功能设计** |  |  | start no earlier than 2017-12-21 |  |  |  |
| 10 | 1.2.1 | 业务、审批人、处理人权限与角色 | 2017-12-21 |  | finish no later than 2017-12-21 | 贾东坡 |  | 0h |
| 11 | 1.2.2 | 元素 | 2017-12-21 | 100% | start no earlier than 2017-12-22 |  | 1h | 1h |
| 12 | 1.2.3 | 复制功能 | 2017-12-21 | 100% | start no earlier than 2017-12-22 |  | 1h | 1h |
| 13 | 1.2.4 | 工单搜索 | 2017-12-21 | 100% | start no earlier than 2017-12-22 |  | 1h | 1h |
| 14 | 1.2.5 | 工单进度显示 | 2017-12-21 | 100% | start no earlier than 2017-12-22 |  | 1h | 1h |
| 15 | 1.2.6 | 任务提醒、通知实现 | 2017-12-21 | 100% | start no earlier than 2017-12-22 |  | 1h | 1h |
| 16 | 1.2.7 | 附件上传 | 2017-12-21 | 100% | start no earlier than 2017-12-22 |  | 1h | 1h |
| 17 | 1.2.8 | 附件下载 | 2017-12-21 | 100% | start no earlier than 2017-12-22 |  | 1h | 1h |
| 18 | 1.3 | 业务流程设计 | 2017-12-22 | 100% | start no earlier than 2017-12-21 | 贾东坡 | 2h | 2h |
| 19 | 1.4 | **界面设计** |  |  | start no earlier than 2018-01-24 |  |  |  |
| 20 | 1.4.1 | 创建工单 | 2017-12-25 | 100% |  | 贾东坡; 周游 | 1h | 1h |
| 21 | 1.4.2 | 保存工单 | 2017-12-25 | 100% |  | 贾东坡; 周游 | 1h | 1h |
| 22 | 1.4.3 | 修改工单 | 2017-12-25 | 100% |  | 贾东坡; 周游 | 1h | 1h |
| 23 | 1.4.4 | 提交工单 | 2017-12-25 | 100% |  | 贾东坡; 周游 | 1h | 1h |
| 24 | 1.4.5 | 复制工单 | 2017-12-25 | 100% |  | 贾东坡; 周游 | 4h | 4h |
| 25 | 1.4.6 | 关闭工单 | 2017-12-25 | 100% |  | 贾东坡; 周游 | 1h | 1h |
| 26 | 1.4.7 | 查询工单 | 2017-12-25 | 100% |  | 贾东坡; 周游 | 1h | 1h |
| 27 | 1.4.8 | 处理工单 | 2017-12-25 | 100% |  | 贾东坡; 周游 | 1h | 1h |
| 28 | 1.4.9 | 处理反馈工单 | 2017-12-25 | 100% |  | 贾东坡; 周游 | 1h | 1h |
| 29 | 1.4.10 | 系统审批工单 | 2017-12-25 | 100% |  | 贾东坡; 周游 | 1h | 1h |
| 30 | 1.4.11 | 邮件审批工单 | 2017-12-25 | 100% |  | 贾东坡; 周游 | 1h | 1h |

| ID | WBS | Task | Start | Complete | Constraint | Resources | Work | Actual work |
| --- | --- | --- | --- | --- | --- | --- | --- | --- |
| 31 | 2 | **开发** |  |  | start no earlier than 2018-01-02 |  |  |  |
| 32 | 2.1 | **流程定义** |  |  |  |  |  |  |
| 33 | 2.1.1 | 画流程图并定义流转关系 | 2018-01-02 | 100% | finish no later than 2018-01-02 | 贾东坡 | 8h | 8h |
| 34 | 2.2 | **流程部署与删除** |  |  |  |  |  |  |
| 35 | 2.2.1 | 流转打包 | 2018-01-04 | 100% | finish no later than 2018-01-04 | 贾东坡 | 8h | 8h |
| 36 | 2.2.2 | 流程包的上传 | 2017-12-22 | 100% |  | 贾东坡 | 8h | 8h |
| 37 | 2.2.3 | 流程包的展示界面 | 2018-01-05 | 100% | finish no later than 2018-01-05 | 贾东坡 | 8h | 8h |
| 38 | 2.3 | **流程api** |  |  |  |  |  |  |
| 39 | 2.3.1 | 布置流程 | 2018-01-08 | 100% | finish no later than 2018-01-08 | 贾东坡 | 8h | 8h |
| 40 | 2.3.2 | 启动流程 | 2018-01-09 | 100% | finish no later than 2018-01-09 | 贾东坡 | 4h | 4h |
| 41 | 2.3.3 | 获取当前流程状态 | 2018-01-09 | 100% | finish no later than 2018-01-09 | 贾东坡 | 4h | 4h |
| 42 | 2.3.4 | 获取当前流程日志 | 2018-01-10 | 100% | finish no later than 2018-01-10 | 贾东坡 | 4h | 4h |
| 43 | 2.3.5 | 删除流程 | 2018-01-10 | 100% | finish no later than 2018-01-10 | 贾东坡 | 4h | 4h |
| 44 | 2.3.6 | 流程日志列表 | 2018-01-11 | 100% | finish no later than 2018-01-11 | 贾东坡 | 4h | 4h |
| 45 | 2.3.7 | 流程流转列表、处理人、处理时间点 | 2018-01-11 | 100% | finish no later than 2018-01-12 | 贾东坡 | 4h | 4h |
| 46 | 2.4 | **工单信息维护** |  |  |  |  |  |  |
| 47 | 2.4.1 | 新建 | 2018-01-02 |  | start no earlier than 2018-01-02 | 周游 | 24h |  |
| 48 | 2.4.2 | 修改 | 2018-01-04 |  | start no earlier than 2018-01-05 | 周游 | 2h |  |
| 49 | 2.4.3 | 清空 |  |  | start no earlier than 2018-01-05 | 周游 | 1h |  |
| 50 | 2.4.4 | 复制 |  |  | start no earlier than 2018-01-05 | 周游 | 2h |  |
| 51 | 2.5 | 提供人员拥有实体权限接口 |  |  | start no earlier than 2018-01-02 | 黎杰 | 4h |  |
| 52 | 2.6 | **工单流转状态** |  |  |  |  |  |  |
| 53 | 2.6.1 | 申请人流转(待提交、待审批、待处理、处理中，待关闭、已关闭) |  | 100% | finish no later than 2018-01-02 | 黎杰 | 4h | 4h |
| 54 | 2.6.2 | 审批人流转信息(待审批、已审批) |  | 100% | finish no later than 2018-01-03 | 黎杰 | 4h | 4h |
| 55 | 2.6.3 | 处理人流转信息(待处理、处理中、待关闭、已关闭) |  | 100% | finish no later than 2018-01-03 | 黎杰 | 4h | 4h |
| 56 | 2.6.4 | 搜索，根据工单号和时间段 |  |  | start no earlier than 2018-01-02 |  | 4h |  |

| ID | WBS | Task | Start | Complete | Constraint | Resources | Work | Actual work |
| --- | --- | --- | --- | --- | --- | --- | --- | --- |
| 57 | 2.7 | **工单流转详情页实现** |  |  |  |  |  |  |
| 58 | 2.7.1 | 工单进度流转图 |  | 100% | finish no later than 2018-01-04 | 黎杰 | 4h | 4h |
| 59 | 2.7.2 | 元素列表按顺序展示 |  | 100% | finish no later than 2018-01-04 | 黎杰 | 4h | 4h |
| 60 | 2.7.3 | 日志列表 |  | 100% | finish no later than 2018-01-05 | 黎杰 | 4h | 4h |
| 61 | 2.8 | **业务元素管理** |  |  |  |  |  |  |
| 62 | 2.8.1 | 新增 |  | 50% | start no earlier than 2018-01-02 | 周游 | 8h | 4h |
| 63 | 2.8.2 | 修改 |  | 50% | start no earlier than 2017-12-25 | 周游 | 8h | 4h |
| 64 | 2.8.3 | 删除 |  | 100% | start no earlier than 2017-12-26 | 周游 | 4h | 4h |
| 65 | 2.8.4 | 元素的搜索(名称、描述、来源) |  | 100% | start no earlier than 2017-12-26 | 周游 | 4h | 4h |
| 66 | 2.9 | **业务实体的管理** |  |  |  |  |  |  |
| 67 | 2.9.1 | 实体的新增 |  | 100% | finish no later than 2017-12-28 |  | 4h | 4h |
| 68 | 2.9.2 | 实体的删除 |  | 100% | finish no later than 2017-12-28 |  | 4h | 4h |
| 69 | 2.9.3 | 实体的修改 |  | 100% | finish no later than 2017-12-29 |  | 4h | 4h |
| 70 | 2.9.4 | 实体的搜索 |  | 100% | finish no later than 2018-01-02 |  | 4h | 4h |
| 71 | 2.9.5 | 实体与元素的关联管理 |  | 100% | finish no later than 2018-01-02 |  | 4h | 4h |
| 72 | 2.10 | 工单文件的上传、下载 | 2017-12-28 | 100% |  | 孟详龙 | 4h | 4h |
| 73 | 2.11 | 附件加密及附件的存储、获取api |  | 33% | finish no later than 2018-01-04 |  | 24h | 8h |
| 74 | 2.12 | 短信验证码 |  | 100% | finish no later than 2018-01-05 | 孟详龙 | 8h | 8h |
| 75 | 2.13 | **邮件审批工单** |  |  |  |  |  |  |
| 76 | 2.13.1 | 待审批 | 2017-12-21 | 50% |  | 孟详龙 | 16h | 8h |
| 77 | 2.13.2 | 待处理 | 2017-12-20 | 80% |  | 孟详龙 | 2h | 1.6h |
| 78 | 2.13.3 | 审批未通过 | 2017-12-25 | 100% |  | 孟详龙 | 2h | 2h |
| 79 | 2.13.4 | 处理中 | 2017-12-26 | 100% |  | 孟详龙 | 2h | 2h |
| 80 | 2.13.5 | 待关闭 | 2017-12-27 | 100% |  | 孟详龙 | 2h | 2h |
| 81 | 2.13.6 | 返回的逻辑 | 2017-12-22 | 100% |  |  | 2h | 2h |
| 82 | 2.14 | 待办实现、首页通知 | 2017-12-22 | 100% |  |  | 8h | 8h |
